Schedule from MS Project, 2022-02-01 to 2022-08-15, costs in $, A marks actual dates.

## Calendars

- Standard: Mon-Fri 08:00-12:00, 13:00-17:00; Sat-Sun off. Exceptions (off unless hours are given): 2022-04-10 (Giỗ tổ Hùng Vương), 2022-04-30 (Giải phóng Miền Nam), 2022-05-01 (Quốc tế lao động).

## Resources

| Resource | Group | Rate |
| --- | --- | --- |
| Dương | NV | 20 |
| Việt Anh | NV | 15 |
| Hoàng | NV | 10 |

## Schedule

| ID | WBS | Task | Duration | Start | Finish | Predecessors | Complete | Remaining | Total slack | Free slack | Resources | Work | Actual work | Cost | Actual cost |
| --- | --- | --- | --- | --- | --- | --- | --- | --- | --- | --- | --- | --- | --- | --- | --- |
| 1 | 1 | **Chuẩn bị dự án** | 10d | 2022-02-01 A | 2022-02-14 |  | 3% | 9.71d | 0d |  |  | 176h | 4h | 3,120 | 80 |
| 2 | 1.1 | **Khởi tạo dự án** | 6d | 2022-02-01 A | 2022-02-08 |  | 8% | 5.5d | 3d | 0d |  | 48h | 4h | 800 | 80 |
| 3 | 1.1.1 | Xác định mục tiêu dự án | 1d | 2022-02-01 | 2022-02-01 |  |  |  | 0.5d | 0d | Dương | 8h |  | 160 |  |
| 4 | 1.1.2 | Xây dựng chiến lược và kế hoạch | 1d | 2022-02-02 A | 2022-02-02 | 3 | 50% | 0.5d | -2d | 0d | Dương | 8h | 4h | 160 | 80 |
| 5 | 1.1.3 | Viết tài liệu khởi tạo dự án | 2d | 2022-02-03 | 2022-02-04 | 4 |  |  | 3d | 0d | Việt Anh | 16h |  | 240 |  |
| 6 | 1.1.4 | Tạo mẫu các loại tài liệu | 2d | 2022-02-07 | 2022-02-08 | 5 |  |  | 3d |  | Việt Anh | 16h |  | 240 |  |
| 7 | 1.2 | Xác định phạm vi | 1d | 2022-02-09 | 2022-02-09 | 2 |  |  | 3d |  | Hoàng | 8h |  | 80 |  |
| 8 | 1.3 | **Xác định và cài đặt môi trường dự án** | 5d | 2022-02-03 | 2022-02-09 | 4 |  |  | -2d | 0d |  | 40h |  | 800 |  |
| 9 | 1.3.1 | Xác định và cài đặt môi trường sử dụng | 2d | 2022-02-03 | 2022-02-04 |  |  |  | -2d | 0d | Dương | 16h |  | 320 |  |
| 10 | 1.3.2 | Xác định, cài đặt và các công cụ phát triển | 2d | 2022-02-07 | 2022-02-08 | 9 |  |  | -2d | 0d | Dương | 16h |  | 320 |  |
| 11 | 1.3.3 | Tổng hợp tài liệu môi trường | 1d | 2022-02-09 | 2022-02-09 | 10 |  |  | -2d | 0d | Dương | 8h |  | 160 |  |
| 12 | 1.4 | **Xác định và phân tích rủi ro** | 3d | 2022-02-08 | 2022-02-10 | 8 |  |  |  |  | Dương | 48h |  | 960 |  |
| 13 | 1.4.1 | Xác định rủi ro | 1d | 2022-02-08 | 2022-02-08 |  |  |  | 0d |  | Dương | 8h |  | 160 |  |
| 14 | 1.4.2 | Phân tích rủi ro | 1d | 2022-02-09 | 2022-02-09 | 13 |  |  | 0d |  | Dương | 8h |  | 160 |  |
| 15 | 1.4.3 | Viết tài liệu rủi ro | 1d | 2022-02-10 | 2022-02-10 | 14 |  |  | 0d |  | Dương | 8h |  | 160 |  |
| 16 | 1.5 | Tổng hợp tài liệu chuẩn bị dự án | 1d | 2022-02-11 | 2022-02-11 | 12 |  |  | 0d |  | Dương; Việt Anh; Hoàng | 24h |  | 360 |  |
| 17 | 1.6 | MKS / Chuẩn bị dự án | 1d | 2022-02-14 | 2022-02-14 | 16 |  |  | 0d |  | Việt Anh | 8h |  | 120 |  |
| 18 | 2 | **Khảo sát** | 18d | 2022-02-15 | 2022-03-10 | 1 |  |  | 0d |  |  | 312h |  | 4,680 |  |
| 19 | 2.1 | **Khảo sát nghiệp vụ quản lý nhân sự** | 8d | 2022-02-15 | 2022-02-24 |  |  |  |  |  |  | 40h |  | 800 |  |
| 20 | 2.1.1 | Lập bảng câu hỏi | 2d | 2022-02-15 | 2022-02-16 |  |  |  | 10d | 0d | Dương | 16h |  | 320 |  |
| 21 | 2.1.2 | Khảo sát đơn vị về cách quản lý nhân sự qua bảng câu hỏi và hỏi trực tiếp | 3d | 2022-02-17 | 2022-02-21 | 20 |  |  | 10d | 0d | Dương | 24h |  | 480 |  |
| 22 | 2.1.3 | Tổng hợp tài liệu về nghiệp vụ quản lý nhân sự | 3d | 2022-02-22 | 2022-02-24 | 21 |  |  | 10d |  |  |  |  |  |  |
| 23 | 2.2 | **Khảo sát nghiệp vụ chấm công** | 8d | 2022-02-15 | 2022-02-24 |  |  |  |  |  |  | 128h |  | 1,600 |  |
| 24 | 2.2.1 | Lập bảng câu hỏi | 2d | 2022-02-15 | 2022-02-16 |  |  |  | 0d |  | Việt Anh; Hoàng | 32h |  | 400 |  |
| 25 | 2.2.2 | Khảo sát người quản lý về cách thức tính công qua bảng câu hỏi và hỏi trực tiếp | 3d | 2022-02-17 | 2022-02-21 | 24 |  |  | 0d |  | Việt Anh; Hoàng | 48h |  | 600 |  |
| 26 | 2.2.3 | Tổng hợp tài liệu về nghiệp vụ quản lý chấm công | 3d | 2022-02-22 | 2022-02-24 | 25 |  |  | 0d |  | Việt Anh; Hoàng | 48h |  | 600 |  |

| ID | WBS | Task | Type | Duration | Start | Finish | Predecessors | Total slack | Free slack | Resources | Work | Cost |
| --- | --- | --- | --- | --- | --- | --- | --- | --- | --- | --- | --- | --- |
| 27 | 2.3 | **Khảo sát nghiệp vụ quản lý bảng lương** |  | 8d | 2022-02-25 | 2022-03-08 | 23 | 2d |  |  | 64h | 1,280 |
| 28 | 2.3.1 | Lập bảng câu hỏi |  | 2d | 2022-02-25 | 2022-02-28 |  | 2d | 0d | Dương | 16h | 320 |
| 29 | 2.3.2 | Khảo sát đơn vị về cách thức tính lương qua bảng câu hỏi và hỏi trực tiếp |  | 3d | 2022-03-01 | 2022-03-03 | 28 | 2d | 0d | Dương | 24h | 480 |
| 30 | 2.3.3 | Tổng hợp tài liệu về nghiệp vụ quản lý bảng lương |  | 3d | 2022-03-04 | 2022-03-08 | 29 | 2d |  | Dương | 24h | 480 |
| 31 | 2.4 | **Khảo sát nghiệp vụ báo cáo, thống kê** |  | 8d | 2022-02-25 | 2022-03-08 | 23 | 0d |  |  | 80h | 1,000 |
| 32 | 2.4.1 | Lập bảng câu hỏi |  | 2d | 2022-02-25 | 2022-02-28 |  | 0d |  | Việt Anh; Hoàng | 32h | 400 |
| 33 | 2.4.2 | Khảo sát đơn vị về cách thức lập báo cáo, thống kê |  | 3d | 2022-03-01 | 2022-03-03 | 32 | 0d |  | Việt Anh; Hoàng | 48h | 600 |
| 34 | 2.4.3 | Tổng hợp tài liệu nghiệp vụ báo cáo, thống kê |  | 3d | 2022-03-04 | 2022-03-08 | 33 | 0d |  |  |  |  |
| 35 | 2.5 | Tổng hợp tài liệu khảo sát | manual | 1d | 2022-03-09 | 2022-03-09 | 31 |  |  |  |  |  |
| 36 | 2.6 | MKS / Khảo sát nghiệp vụ | manual | 1d | 2022-03-10 | 2022-03-10 | 35 |  |  |  |  |  |
| 37 | 3 | **Phân tích** |  | 13d | 2022-03-11 | 2022-03-29 | 18 | 0d |  |  | 280h | 4,120 |
| 38 | 3.1 | **Mô hình hóa quy trình nghiệp vụ** |  | 5d | 2022-03-11 | 2022-03-17 |  |  |  |  | 40h | 800 |
| 39 | 3.1.1 | Mô hình hóa quy trình nghiệp vụ quản lý nhân sự |  | 1d | 2022-03-11 | 2022-03-11 |  | 8d | 0d | Dương | 8h | 160 |
| 40 | 3.1.2 | Mô hình hóa quy trình nghiệp vụ chấm công |  | 1d | 2022-03-14 | 2022-03-14 | 39 | 8d | 0d | Dương | 8h | 160 |
| 41 | 3.1.3 | Mô hình hóa quy trình nghiệp vụ quảy lý bảng lương |  | 1d | 2022-03-15 | 2022-03-15 | 40 | 8d | 0d | Dương | 8h | 160 |
| 42 | 3.1.4 | Mô hình hóa quy trình nghiệp vụ báo cáo, thống kê |  | 1d | 2022-03-16 | 2022-03-16 | 41 | 8d | 0d | Dương | 8h | 160 |
| 43 | 3.1.5 | Tổng hợp tài liệu mô hình hóa quy trình nghiệp vụ |  | 1d | 2022-03-17 | 2022-03-17 | 42 | 8d |  | Dương | 8h | 160 |
| 44 | 3.2 | **Liệt kê các chức năng chính và xây dựng sơ đồ tổng quan các chức năng, sơ đồ luồng công việc** |  | 5d | 2022-03-11 | 2022-03-17 |  |  |  |  | 64h | 800 |
| 45 | 3.2.1 | Nghiệp vụ quản lý nhân sự |  | 1d | 2022-03-11 | 2022-03-11 |  | 0d |  | Hoàng; Việt Anh | 16h | 200 |
| 46 | 3.2.2 | Nghiệp vụ quản lý chấm công |  | 1d | 2022-03-14 | 2022-03-14 | 45 | 0d |  | Hoàng; Việt Anh | 16h | 200 |
| 47 | 3.2.3 | Nghiệp vụ quản lý bảng lương |  | 1d | 2022-03-15 | 2022-03-15 | 46 | 0d |  | Hoàng; Việt Anh | 16h | 200 |
| 48 | 3.2.4 | Nghiệp vụ báo cáo, thống kê |  | 1d | 2022-03-16 | 2022-03-16 | 47 | 0d |  | Hoàng; Việt Anh | 16h | 200 |
| 49 | 3.2.5 | Tổng hợp tài liệu và các sơ đồ tổng quan chức năng và luồng công việc |  | 1d | 2022-03-17 | 2022-03-17 | 48 | 0d |  |  |  |  |
| 50 | 3.3 | **Mô tả các tác nhân, thực thể, các chức năng chính** |  | 2d | 2022-03-18 | 2022-03-21 | 44 | 0d |  |  | 56h | 880 |
| 51 | 3.3.1 | Nghiệp vụ quản lý nhân sự |  | 1d | 2022-03-18 | 2022-03-18 |  | 1d |  | Dương | 8h | 160 |
| 52 | 3.3.2 | Nghiệp vụ quảy lý châm công |  | 1d | 2022-03-18 | 2022-03-18 |  | 1d |  | Việt Anh | 8h | 120 |
| 53 | 3.3.3 | Nghiệp vụ quản lý bảng lương |  | 1d | 2022-03-18 | 2022-03-18 |  | 1d |  | Hoàng | 8h | 80 |
| 54 | 3.3.4 | Nghiệp vụ báo cáo, thống kê |  | 1d | 2022-03-18 | 2022-03-18 |  | 0d |  | Dương | 8h | 160 |
| 55 | 3.3.5 | Tổng hợp tài liệu mô tả các tác nhân, thực thể, các chức năng chính |  | 1d | 2022-03-21 | 2022-03-21 | 54 | 0d |  | Dương; Hoàng; Việt Anh | 24h | 360 |

| ID | WBS | Task | Duration | Start | Finish | Predecessors | Total slack | Free slack | Resources | Work | Cost |
| --- | --- | --- | --- | --- | --- | --- | --- | --- | --- | --- | --- |
| 56 | 3.4 | **Đặc tả các chức năng chính của phần mềm và viết tài liệu đặc tả** | 2d | 2022-03-22 | 2022-03-23 | 50 | 0d |  |  | 56h | 840 |
| 57 | 3.4.1 | Nghiệp vụ quản lý nhân sự | 1d | 2022-03-22 | 2022-03-22 |  | 1d |  | Dương | 8h | 160 |
| 58 | 3.4.2 | Nghiệp vụ quản lý chấm công | 1d | 2022-03-22 | 2022-03-22 |  | 1d |  | Việt Anh | 8h | 120 |
| 59 | 3.4.3 | Nghiệp vụ quản lý bảng lương | 1d | 2022-03-22 | 2022-03-22 |  | 1d |  | Hoàng | 8h | 80 |
| 60 | 3.4.4 | Nghiệp vụ báo cáo thống kê | 1d | 2022-03-22 | 2022-03-22 |  | 0d |  | Việt Anh | 8h | 120 |
| 61 | 3.4.5 | Tổng hợp tài liệu đặc tả chức năng | 1d | 2022-03-23 | 2022-03-23 | 60 | 0d |  | Dương; Hoàng; Việt Anh | 24h | 360 |
| 62 | 3.5 | Lựa chọn kiến trúc phần mềm, cơ sở dữ liệu | 2d | 2022-03-24 | 2022-03-25 | 56 | 0d |  | Việt Anh; Hoàng | 32h | 400 |
| 63 | 3.6 | Tổng hợp tài liệu phân tích | 1d | 2022-03-28 | 2022-03-28 | 62 | 0d |  | Hoàng; Việt Anh | 16h | 200 |
| 64 | 3.7 | MKS / Phân tích nghiệp vụ | 1d | 2022-03-29 | 2022-03-29 | 63 | 0d |  | Hoàng; Việt Anh | 16h | 200 |
| 65 | 4 | **Thiết kế phần mềm** | 16d | 2022-03-30 | 2022-04-20 | 37 | 0d |  |  | 416h | 6,080 |
| 66 | 4.1 | **Thiết kế sơ đồ lớp phân tích các chức năng** | 5d | 2022-03-30 | 2022-04-05 |  |  |  |  | 40h | 800 |
| 67 | 4.1.1 | Nghiệp vụ quản lý nhân sự | 1d | 2022-03-30 | 2022-03-30 |  | 11d | 0d | Dương | 8h | 160 |
| 68 | 4.1.2 | Nghiệp vụ quản lý châm công | 1d | 2022-03-31 | 2022-03-31 | 67 | 11d | 0d | Dương | 8h | 160 |
| 69 | 4.1.3 | Nghiệp vụ quản lý bảng lương | 1d | 2022-04-01 | 2022-04-01 | 68 | 11d | 0d | Dương | 8h | 160 |
| 70 | 4.1.4 | Nghiệp vụ báo cáo, thống kê | 1d | 2022-04-04 | 2022-04-04 | 69 | 11d | 0d | Dương | 8h | 160 |
| 71 | 4.1.5 | Tổng hợp tài liệu thiết kế sơ đồ lớp phân tích | 1d | 2022-04-05 | 2022-04-05 | 70 | 11d |  | Dương | 8h | 160 |
| 72 | 4.2 | **Thiết kế sơ đồ trình tự cho các chức năng** | 5d | 2022-03-30 | 2022-04-05 |  |  |  |  | 80h | 1,000 |
| 73 | 4.2.1 | Nghiệp vụ quản lý nhân sự | 1d | 2022-03-30 | 2022-03-30 |  | 0d |  | Việt Anh; Hoàng | 16h | 200 |
| 74 | 4.2.2 | Nghiệp vụ quản lý chấm công | 1d | 2022-03-31 | 2022-03-31 | 73 | 0d |  | Hoàng; Việt Anh | 16h | 200 |
| 75 | 4.2.3 | Nghiệp vụ quản lý bảng lương | 1d | 2022-04-01 | 2022-04-01 | 74 | 0d |  | Hoàng; Việt Anh | 16h | 200 |
| 76 | 4.2.4 | Nghiệp vụ báo cáo, thống kê | 1d | 2022-04-04 | 2022-04-04 | 75 | 0d |  | Hoàng; Việt Anh | 16h | 200 |
| 77 | 4.2.5 | Tổng hợp tài liệu thiết kế sơ đồ trình tự | 1d | 2022-04-05 | 2022-04-05 | 76 | 0d |  | Hoàng; Việt Anh | 16h | 200 |
| 78 | 4.3 | **Thiết kế sơ đồ lớp chi tiết các chức năng** | 3d | 2022-04-06 | 2022-04-08 | 72 | 0d |  |  | 88h | 1,240 |
| 79 | 4.3.1 | Nghiệp vụ quản lý nhân sự | 2d | 2022-04-06 | 2022-04-07 |  | 1d |  | Dương | 16h | 320 |
| 80 | 4.3.2 | Nghiệp vụ quản lý chấm công | 2d | 2022-04-06 | 2022-04-07 |  | 1d |  | Hoàng | 16h | 160 |
| 81 | 4.3.3 | Nghiệp vụ quyản lý bảng lương | 2d | 2022-04-06 | 2022-04-07 |  | 1d |  | Việt Anh | 16h | 240 |
| 82 | 4.3.4 | Nghiệp vụ báo cáo, thống kê | 2d | 2022-04-06 | 2022-04-07 |  | 0d |  | Hoàng | 16h | 160 |
| 83 | 4.3.5 | Tổng hợp tài liệu thiết kế sơ đồ chi tiết | 1d | 2022-04-08 | 2022-04-08 | 82 | 0d |  | Dương; Hoàng; Việt Anh | 24h | 360 |

| ID | WBS | Task | Duration | Start | Finish | Predecessors | Total slack | Free slack | Resources | Work | Cost |
| --- | --- | --- | --- | --- | --- | --- | --- | --- | --- | --- | --- |
| 84 | 4.4 | **Thiết kế cơ sở dữ liệu** | 3d | 2022-04-11 | 2022-04-13 | 78 |  |  |  | 88h | 1,320 |
| 85 | 4.4.1 | Nghiệp vụ quản lý nhân sự | 2d | 2022-04-11 | 2022-04-12 |  | 1d |  | Dương | 16h | 320 |
| 86 | 4.4.2 | Nghiệp vụ quản lý chấm công | 2d | 2022-04-11 | 2022-04-12 |  | 1d |  | Việt Anh | 16h | 240 |
| 87 | 4.4.3 | Nghiệp vụ quản lý bảng lương | 2d | 2022-04-11 | 2022-04-12 |  | 1d |  | Hoàng | 16h | 160 |
| 88 | 4.4.4 | Nghiệp vụ báo cáo thống kê | 2d | 2022-04-11 | 2022-04-12 |  | 0d |  | Việt Anh | 16h | 240 |
| 89 | 4.4.5 | Tổng hợp tài liệu thiết kế cơ sở dữ liệu | 1d | 2022-04-13 | 2022-04-13 | 88 | 0d |  | Dương; Hoàng; Việt Anh | 24h | 360 |
| 90 | 4.5 | **Thiết kế giao diện** | 3d | 2022-04-14 | 2022-04-18 | 84 | 0d |  |  | 88h | 1,240 |
| 91 | 4.5.1 | Nghiệp vụ quản lý nhân sự | 2d | 2022-04-14 | 2022-04-15 |  | 1d |  | Dương | 16h | 320 |
| 92 | 4.5.2 | Nghiệp vụ quản lý chấm công | 2d | 2022-04-14 | 2022-04-15 |  | 1d |  | Việt Anh | 16h | 240 |
| 93 | 4.5.3 | Nghiệp vụ quản lý bảng lương | 2d | 2022-04-14 | 2022-04-15 |  | 1d |  | Hoàng | 16h | 160 |
| 94 | 4.5.4 | Nghiệp vụ báo cáo, thống kê | 2d | 2022-04-14 | 2022-04-15 |  | 0d |  | Hoàng | 16h | 160 |
| 95 | 4.5.5 | Tổng hợp tài liệu thiết kế giao diện | 1d | 2022-04-18 | 2022-04-18 | 94 | 0d |  | Dương; Hoàng; Việt Anh | 24h | 360 |
| 96 | 4.6 | Tổng hợp tài liệu thiết kế hệ thống | 1d | 2022-04-19 | 2022-04-19 | 90 | 0d |  | Dương; Việt Anh; Hoàng | 24h | 360 |
| 97 | 4.7 | MKS / Thiết kế CSDL, giao diện và các chức năng | 1d | 2022-04-20 | 2022-04-20 | 96 | 0d |  | Việt Anh | 8h | 120 |
| 98 | 5 | **Xây dựng phần mềm** | 29d | 2022-04-21 | 2022-05-31 | 65 | 0d |  |  | 576h | 9,200 |
| 99 | 5.1 | **Xây dựng cơ sở dữ liệu** | 5d | 2022-04-21 | 2022-04-27 |  |  |  |  | 80h | 1,000 |
| 100 | 5.1.1 | Nghiệp vụ quản lý nhân sự | 1d | 2022-04-21 | 2022-04-21 |  | 0d |  | Hoàng; Việt Anh | 16h | 200 |
| 101 | 5.1.2 | Nghiệp vụ quản lý chấm công | 1d | 2022-04-22 | 2022-04-22 | 100 | 0d |  | Hoàng; Việt Anh | 16h | 200 |
| 102 | 5.1.3 | Nghiệp vụ quản lý bảng lương | 1d | 2022-04-25 | 2022-04-25 | 101 | 0d |  | Hoàng; Việt Anh | 16h | 200 |
| 103 | 5.1.4 | Nghiệp vụ báo cáo, thống kê | 1d | 2022-04-26 | 2022-04-26 | 102 | 0d |  | Hoàng; Việt Anh | 16h | 200 |
| 104 | 5.1.5 | Tổng hợp tài liệu xây dựng cơ sở dữ liệu | 1d | 2022-04-27 | 2022-04-27 | 103 | 0d |  | Hoàng; Việt Anh | 16h | 200 |
| 105 | 5.2 | **Xây dựng giao diện** | 14d | 2022-04-28 | 2022-05-17 | 99 |  |  |  | 224h | 3,360 |
| 106 | 5.2.1 | Nghiệp vụ quản lý nhân sự | 3d | 2022-04-28 | 2022-05-02 |  | 10d | 0d | Hoàng; Dương | 48h | 720 |
| 107 | 5.2.2 | Nghiệp vụ quản lý chấm công | 3d | 2022-05-03 | 2022-05-05 | 106 | 10d | 0d | Hoàng; Dương | 48h | 720 |
| 108 | 5.2.3 | Nghiệp vụ quản lý bảng lương | 3d | 2022-05-06 | 2022-05-10 | 107 | 10d | 0d | Hoàng; Dương | 48h | 720 |
| 109 | 5.2.4 | Nghiệp vụ báo cáo, thống kê | 3d | 2022-05-11 | 2022-05-13 | 108 | 10d | 0d | Hoàng; Dương | 48h | 720 |
| 110 | 5.2.5 | Tổng hợp tài liệu xây dựng giao diện | 2d | 2022-05-16 | 2022-05-17 | 109 | 10d |  | Hoàng; Dương | 32h | 480 |

| ID | WBS | Task | Duration | Start | Finish | Predecessors | Total slack | Resources | Work | Cost |
| --- | --- | --- | --- | --- | --- | --- | --- | --- | --- | --- |
| 111 | 5.3 | **Xây dựng chức năng** | 19d | 2022-04-28 | 2022-05-24 | 99 |  |  | 152h | 3,040 |
| 112 | 5.3.1 | Nghiệp vụ quản lý nhân sự | 4d | 2022-04-28 | 2022-05-03 |  | 0d | Dương | 32h | 640 |
| 113 | 5.3.2 | Nghiệp vụ quản lý chấm công | 4d | 2022-05-04 | 2022-05-09 | 112 | 0d | Dương | 32h | 640 |
| 114 | 5.3.3 | Nghiệp vụ quản lý bảng lương | 4d | 2022-05-10 | 2022-05-13 | 113 | 0d | Dương | 32h | 640 |
| 115 | 5.3.4 | Nghiệp vụ báo cáo, thống kê | 4d | 2022-05-16 | 2022-05-19 | 114 | 0d | Dương | 32h | 640 |
| 116 | 5.3.5 | Tổng hợp tài liệu xây dựng chức năng | 3d | 2022-05-20 | 2022-05-24 | 115 | 0d | Dương | 24h | 480 |
| 117 | 5.4 | Ghép các module chương trình để tạo một chương trình hoàn chỉnh | 2d | 2022-05-25 | 2022-05-26 | 111 | 0d | Dương; Hoàng; Việt Anh | 48h | 720 |
| 118 | 5.5 | Viết tài liệu xây dựng phần mềm | 2d | 2022-05-27 | 2022-05-30 | 117 | 0d | Dương; Hoàng; Việt Anh | 48h | 720 |
| 119 | 5.6 | MKS / Lập trình giao diện và các chức năng | 1d | 2022-05-31 | 2022-05-31 | 118 | 0d | Dương; Hoàng; Việt Anh | 24h | 360 |
| 120 | 6 | **Kiểm thử phần mềm** | 46d | 2022-06-01 | 2022-08-03 | 98 | 0d |  | 856h | 12,280 |
| 121 | 6.1 | Tạo kịch bản test và testcase | 15d | 2022-06-01 | 2022-06-21 |  | 0d | Dương; Hoàng; Việt Anh | 360h | 5,400 |
| 122 | 6.2 | Kiểm thử giao diện | 4d | 2022-06-22 | 2022-06-27 | 121 | 27d | Hoàng | 32h | 320 |
| 123 | 6.3 | Kiểm thử validate | 4d | 2022-06-22 | 2022-06-27 | 121 | 0d | Việt Anh | 32h | 480 |
| 124 | 6.4 | Kiểm thử chức năng | 8d | 2022-06-28 | 2022-07-07 | 123 | 19d | Việt Anh | 64h | 960 |
| 125 | 6.5 | Kiểm thử bảo mật | 2d | 2022-06-28 | 2022-06-29 | 123 | 0d | Hoàng | 16h | 160 |
| 126 | 6.6 | Kiểm thử tích hợp | 8d | 2022-06-30 | 2022-07-11 | 125 | 0d | Hoàng | 64h | 640 |
| 127 | 6.7 | Sửa lỗi | 10d | 2022-07-12 | 2022-07-25 | 126 | 0d | Dương; Việt Anh; Hoàng | 240h | 3,600 |
| 128 | 6.8 | Kiểm thử và khắc phục lỗi | 4d | 2022-07-26 | 2022-07-29 | 127 | 0d | Việt Anh | 32h | 480 |
| 129 | 6.9 | Tổng hợp tài liệu kiểm thử | 2d | 2022-08-01 | 2022-08-02 | 128 | 0d | Việt Anh | 16h | 240 |
| 130 | 6.10 | MKS / Kiểm thử phần mềm | 1d | 2022-08-03 | 2022-08-03 | 129 | 0d |  |  |  |
| 131 | 7 | **Triển khai phần mềm** | 7d | 2022-08-04 | 2022-08-12 | 120 | 0d |  | 72h | 1,000 |
| 132 | 7.1 | Cài đặt phần mềm | 2d | 2022-08-04 | 2022-08-05 |  | 0d | Việt Anh; Hoàng | 32h | 400 |
| 133 | 7.2 | Hướng dẫn sử dụng | 2d | 2022-08-08 | 2022-08-09 | 132 | 0d | Dương | 16h | 320 |
| 134 | 7.3 | Viết tài liệu triển khai | 2d | 2022-08-10 | 2022-08-11 | 133 | 0d | Hoàng | 16h | 160 |
| 135 | 7.4 | MKS / Triển khai phần mềm | 1d | 2022-08-12 | 2022-08-12 | 134 | 0d | Việt Anh | 8h | 120 |
| 136 | 8 | MKS / Hoàn thành dự án | 1d | 2022-08-15 | 2022-08-15 | 131 | 0d | Dương; Việt Anh; Hoàng | 24h | 360 |
